Schedule from GanttProject, 2024-01-02 to 2024-10-22.

## Calendars

- Project calendar: Mon-Fri working; Sat-Sun off. Exceptions (off unless hours are given): 2024-05-27 (Memorial Day), 2024-07-05 (Independence day), 2024-09-02 (Labour day).

## Schedule

| ID | WBS | Task | Duration | Start | Finish | Predecessors |
| --- | --- | --- | --- | --- | --- | --- |
| 1 | 1 | **Nightingale Project** | 208d | 2024-01-02 | 2024-10-22 |  |
| 2 | 1.1 | Architectural decisions | 10d | 2024-01-02 | 2024-01-15 |  |
| 3 | 1.2 | Internal specifications | 20d | 2024-01-16 | 2024-02-12 | 2 |
| 4 | 1.3 | External specifications | 18d | 2024-01-16 | 2024-02-08 | 2 |
| 5 | 1.4 | Feature specifications | 15d | 2024-01-16 | 2024-02-05 | 2 |
| 6 | 1.5 | Voice recognitiom | 15d | 2024-02-13 | 2024-03-04 | 3, 4 |
| 7 | 1.6 | Case | 4d | 2024-02-13 | 2024-02-16 | 3, 4 |
| 8 | 1.7 | Screen | 2d | 2024-02-13 | 2024-02-14 | 3, 4 |
| 9 | 1.8 | Speaker output jacks | 2d | 2024-02-13 | 2024-02-14 | 3, 4 |
| 10 | 1.9 | Tape mechanism | 2d | 2024-02-13 | 2024-02-14 | 3, 4 |
| 11 | 1.10 | Database | 35d | 2024-02-06 | 2024-03-25 | 5 |
| 12 | 1.11 | Microphone/sound card | 5d | 2024-02-06 | 2024-02-12 | 5 |
| 13 | 1.12 | Pager | 4d | 2024-02-06 | 2024-02-09 | 5 |
| 14 | 1.13 | Barcode reader | 3d | 2024-02-06 | 2024-02-08 | 5 |
| 15 | 1.14 | Alarm clock | 4d | 2024-02-06 | 2024-02-09 | 5 |
| 16 | 1.15 | Computer I/O | 5d | 2024-02-06 | 2024-02-12 | 5 |
| 17 | 1.16 | Review design | 10d | 2024-03-26 | 2024-04-08 | 6, 7, 8, 9, 10, 11, 12, 13, 14, 15, 16 |
| 18 | 1.17 | Price components | 5d | 2024-03-26 | 2024-04-01 | 6, 7, 8, 9, 10, 11, 12, 13, 14, 15, 16 |
| 19 | 1.18 | Integration | 15d | 2024-04-09 | 2024-04-29 | 17, 18 |
| 20 | 1.19 | Document design | 30d | 2024-04-02 | 2024-05-13 | 17SS+5d |
| 21 | 1.20 | Procedure prototype components | 15d | 2024-04-30 | 2024-05-20 | 19 |
| 22 | 1.21 | Assemble prototypes | 10d | 2024-05-21 | 2024-06-04 | 21 |
| 23 | 1.22 | Lab test prototypes | 20d | 2024-06-05 | 2024-07-02 | 22 |
| 24 | 1.23 | Field test prototypes | 20d | 2024-07-03 | 2024-07-31 | 20, 23 |
| 25 | 1.24 | Adjust design | 20d | 2024-07-25 | 2024-08-21 | 24SS+15d |
| 26 | 1.25 | Order stock parts | 15d | 2024-08-01 | 2024-08-21 | 25SS+5d |
| 27 | 1.26 | Order custom parts | 2d | 2024-08-01 | 2024-08-02 | 25SS+5d |
| 28 | 1.27 | Assemble first production unit | 10d | 2024-09-04 | 2024-09-17 | 26FS+8d, 27FS+13d |
| 29 | 1.28 | Test unit | 10d | 2024-09-18 | 2024-10-01 | 28 |
| 30 | 1.29 | Product 30 units | 15d | 2024-10-02 | 2024-10-22 | 29 |
| 31 | 1.30 | Train sales representatives | 10d | 2024-10-09 | 2024-10-22 | 29SS+5d, 30SS+5d |
